# Analytics and Prediction System for CE Curriculum administrators GanttChart

Schedule from MS Project, 2022-08-01 to 2023-03-31, 2 hours a day, A marks actual dates.

## Calendars

- Standard: Mon-Sun 19:00-21:00.

## Resources

| Resource |
| --- |
| 62010465 |
| 62010299 |

## Schedule

| ID | WBS | Task | Type | Duration | Start | Finish | Predecessors | Complete | Remaining | Baseline start | Baseline finish | Baseline duration | Baseline 1 start | Baseline 1 finish | Total slack | Resources | Work | Actual work |
| --- | --- | --- | --- | --- | --- | --- | --- | --- | --- | --- | --- | --- | --- | --- | --- | --- | --- | --- |
| 1 | 0 | **Analytics and Prediction System for CE Curriculum administrators** |  | 243d | 2022-08-01 A | 2023-03-31 |  | 28% | 174.76d |  |  |  |  |  | 0d | 62010299; 62010465 | 3467.76h | 375.98h |
| 2 | 1 | ศึกษาทฤษฎีที่เกี่ยวข้อง | manual | 30d | 2022-08-01 A | 2022-08-31 |  | 75% | 7.5d | 2022-08-01 | 2022-08-31 | 30d | 2022-08-01 | 2022-08-31 |  | 62010299; 62010465 | 120h | 90h |
| 3 | 2 | **เตรียม Docker** |  | 8d | 2022-09-01 A | 2022-09-08 A |  | 100% |  |  |  |  |  |  |  | 62010465 | 36h | 36h |
| 4 | 2.2 | Docker Image สำหรับ Django | manual | 3d | 2022-09-01 A | 2022-09-03 A |  | 100% |  | 2022-09-01 | 2022-09-03 | 3d | 2022-09-01 | 2022-09-03 |  | 62010465 | 6h | 6h |
| 5 | 2.3 | Docker Image สำหรับ MariaDB | manual | 3d | 2022-09-03 A | 2022-09-05 A |  | 100% |  | 2022-09-03 | 2022-09-05 | 3d | 2022-09-03 | 2022-09-05 |  | 62010465 | 6h | 6h |
| 6 | 2.4 | Docker Image สำหรับ React | manual | 2d | 2022-09-06 A | 2022-09-07 A |  | 100% |  | 2022-09-06 | 2022-09-07 | 2d | 2022-09-06 | 2022-09-07 |  | 62010465 | 4h | 4h |
| 7 | 2.5 | Compose Image Django และ MariaDB | manual | 1d | 2022-09-07 A | 2022-09-07 A | 4, 5 | 100% |  | 2022-09-07 | 2022-09-07 | 1d | 2022-09-07 | 2022-09-07 |  | 62010465 | 2h | 2h |
| 8 | 2.6 | Compose Image React | manual | 1d | 2022-09-08 A | 2022-09-08 A | 6 | 100% |  | 2022-09-08 | 2022-09-08 | 1d | 2022-09-08 | 2022-09-08 |  | 62010465 | 2h | 2h |
| 9 | 3 | **เตรียม Server** |  | 7d | 2022-09-01 A | 2022-09-07 |  | 50% | 3.5d |  |  |  |  |  | 0d | 62010299 | 28h | 11h |
| 10 | 3.1 | ติดตั้ง Maria DB | manual | 2d | 2022-09-01 A | 2022-09-02 A |  | 100% |  | 2022-09-01 | 2022-09-02 | 2d | 2022-09-01 | 2022-09-02 |  | 62010299 | 4h | 4h |
| 11 | 3.2 | ติดตั้ง Python | manual | 2d | 2022-09-03 A | 2022-09-04 |  | 75% | 0.5d | 2022-09-03 | 2022-09-04 | 2d | 2022-09-03 | 2022-09-04 |  | 62010299 | 4h | 3h |
| 12 | 3.3 | ติดตั้ง Django Framework | manual | 2d | 2022-09-05 | 2022-09-06 |  |  |  | 2022-09-05 | 2022-09-06 | 2d | 2022-09-05 | 2022-09-06 |  | 62010299 | 4h |  |
| 13 | 3.4 | ติดตั้ง React | manual | 1d | 2022-09-07 | 2022-09-07 |  |  |  | 2022-09-07 | 2022-09-07 | 1d | 2022-09-07 | 2022-09-07 |  | 62010299 | 2h |  |
| 14 | 4 | **เตรียม Data สำหรับการพัฒนา** |  | 8d | 2022-09-08 A | 2022-09-15 |  | 72% | 2.22d |  |  |  |  |  | 0d | 62010299 | 34h | 19h |
| 15 | 4.1 | ออกแบบ Schema | manual | 3d | 2022-09-08 A | 2022-09-10 A |  | 100% |  | 2022-09-08 | 2022-09-10 | 3d | 2022-09-08 | 2022-09-10 |  | 62010299 | 6h | 6h |
| 16 | 4.2 | ออกแบบ Relational Database | manual | 3d | 2022-09-11 A | 2022-09-13 A |  | 100% |  | 2022-09-11 | 2022-09-13 | 3d | 2022-09-11 | 2022-09-13 |  | 62010299 | 6h | 6h |
| 17 | 4.3 | นำข้อมูลเข้า Database | manual | 1d | 2022-09-14 | 2022-09-14 | 15, 16 |  |  | 2022-09-14 | 2022-09-14 | 1d | 2022-09-14 | 2022-09-14 |  | 62010299 | 2h |  |
| 18 | 4.4 | Clean Data | manual | 1d | 2022-09-14 A | 2022-09-14 |  | 25% | 0.75d | 2022-09-14 | 2022-09-14 | 1d | 2022-09-14 | 2022-09-14 |  | 62010299 | 2h | 0.5h |
| 19 | 4.5 | Transfrom data | manual | 1d | 2022-09-15 A | 2022-09-15 |  | 25% | 0.75d | 2022-09-15 | 2022-09-15 | 1d | 2022-09-15 | 2022-09-15 |  | 62010299 | 2h | 0.5h |
| 20 | 5 | **พัฒนา Function NLP สำหรับจับกลุ่มวิชา** |  | 22d | 2022-09-09 A | 2022-09-30 |  | 66% | 7.5d |  |  |  |  |  |  | 62010299 | 88h | 57.22h |
| 21 | 5.1 | ศึกษา NLP และทดลองใช้งาน | manual | 5d | 2022-09-09 A | 2022-09-13 A |  | 100% |  |  |  |  |  |  |  | 62010299 | 10h | 10h |
| 22 | 5.2 | พัฒนา NLP สำหรับจับกลุ่ม วิชาบังคับ และ วิชาเลือกภาค | manual | 7d | 2022-09-14 A | 2022-09-20 A | 21 | 100% |  |  |  |  |  |  |  | 62010299 | 14h | 14h |
| 23 | 5.3 | Test Function NLP and Tuning | manual | 10d | 2022-09-21 A | 2022-09-30 | 22 | 25% | 7.5d |  |  |  |  |  |  | 62010299 | 20h | 5h |
| 24 | 6 | **พัฒนา Similarity Model** |  | 38d | 2022-09-08 A | 2022-10-15 |  | 59% | 15.59d |  |  |  |  |  | 0d | 62010465 | 154h | 61h |
| 25 | 6.1 | ทดลองใช้งาน Surprise Scikit learn | manual | 15d | 2022-09-08 A | 2022-09-22 A |  | 100% |  | 2022-09-08 | 2022-09-22 | 15d | 2022-09-08 | 2022-09-22 |  | 62010465 | 30h | 30h |
| 26 | 6.2 | พัฒนา Model Similarity รุ่น prototype | manual | 8d | 2022-09-23 A | 2022-09-30 A | 25 | 100% |  | 2022-09-23 | 2022-09-30 | 8d | 2022-09-23 | 2022-09-30 |  | 62010465 | 16h | 16h |
| 27 | 6.3 | พัฒนา Model Similarity รุ่น Optimized | manual | 10d | 2022-09-30 | 2022-10-09 | 25 |  |  | 2022-09-23 | 2022-09-30 | 8d | 2022-09-23 | 2022-09-30 |  | 62010465 | 20h |  |
| 28 | 6.4 | Test Model | manual | 6d | 2022-10-10 | 2022-10-15 | 26, 27 |  |  | 2022-10-10 | 2022-10-15 | 6d | 2022-10-10 | 2022-10-15 |  | 62010465 | 12h |  |

| ID | WBS | Task | Type | Duration | Start | Finish | Predecessors | Complete | Remaining | Baseline start | Baseline finish | Baseline duration | Baseline 1 start | Baseline 1 finish | Total slack | Resources | Work | Actual work |
| --- | --- | --- | --- | --- | --- | --- | --- | --- | --- | --- | --- | --- | --- | --- | --- | --- | --- | --- |
| 29 | 7 | **พัฒนา Job Classification Model** |  | 31d | 2022-10-16 | 2022-11-15 |  |  |  |  |  |  |  |  | 0d | 62010299 | 124h |  |
| 30 | 7.1 | ทดลอง Model KNN และ Decision Tree | manual | 17d | 2022-10-16 | 2022-11-01 |  |  |  | 2022-10-16 | 2022-11-01 | 17d | 2022-10-16 | 2022-11-01 |  | 62010299 | 34h |  |
| 31 | 7.2 | พัฒนา Model Classification | manual | 8d | 2022-11-02 | 2022-11-09 | 30 |  |  | 2022-11-02 | 2022-11-09 | 8d | 2022-11-02 | 2022-11-09 |  | 62010299 | 16h |  |
| 32 | 7.3 | Test Model | manual | 6d | 2022-11-10 | 2022-11-15 | 31 |  |  | 2022-11-10 | 2022-11-15 | 6d | 2022-11-10 | 2022-11-15 |  | 62010299 | 12h |  |
| 33 | 8 | **พัฒนา Django Web App** |  | 151d | 2022-10-16 A | 2023-03-15 |  | 2% | 148.37d |  |  |  |  |  | 0d | 62010299; 62010465 | 1283.77h | 7.76h |
| 34 | 8.1 | **พัฒนา Backend Function** |  | 90d | 2022-10-16 | 2023-01-13 |  |  |  |  |  |  |  |  | 0d | 62010465 | 246h |  |
| 35 | 8.1.1 | พัฒนา Function Map Subject Group | manual | 6d | 2022-12-15 | 2022-12-20 |  |  |  | 2022-12-15 | 2022-12-20 | 6d | 2022-12-15 | 2022-12-20 |  | 62010465 | 12h |  |
| 36 | 8.1.2 | พัฒนา Call Fuction similarity หลักสูตรปกติ | manual | 4d | 2022-10-16 | 2022-10-19 |  |  |  | 2022-10-16 | 2022-10-19 | 4d | 2022-10-16 | 2022-10-19 |  | 62010465 | 8h |  |
| 37 | 8.1.3 | พัฒนา Call Fuction similarity หลักสูตรต่อเนื่อง | manual | 4d | 2022-10-16 | 2022-10-19 |  |  |  | 2022-10-16 | 2022-10-19 | 4d | 2022-10-16 | 2022-10-19 |  | 62010465 | 8h |  |
| 38 | 8.1.4 | พัฒนา Function Analytic Data | manual | 13d | 2022-12-26 | 2023-01-07 |  |  |  | 2022-12-26 | 2023-01-07 | 13d | 2022-12-26 | 2023-01-07 |  | 62010465 | 26h |  |
| 39 | 8.1.5 | พัฒนา Function Sum Occupations | manual | 3d | 2023-01-08 | 2023-01-10 |  |  |  | 2023-01-08 | 2023-01-10 | 3d | 2023-01-08 | 2023-01-10 |  | 62010465 | 6h |  |
| 40 | 8.1.6 | พัฒนา Function Recommend Elective Subject | manual | 3d | 2023-01-11 | 2023-01-13 |  |  |  | 2023-01-11 | 2023-01-13 | 3d | 2023-01-11 | 2023-01-13 |  | 62010465 | 6h |  |
| 41 | 8.2 | **พัฒนา API** |  | 32d | 2022-12-15 A | 2023-01-15 |  | 6% | 30.12d |  |  |  |  |  | 0d | 62010299 | 131.76h | 7.76h |
| 42 | 8.2.1 | พัฒนา API Simple CSV Generator | manual | 8d | 2022-12-15 A | 2022-12-22 |  | 25% | 6d | 2022-12-15 | 2022-12-22 | 8d | 2022-12-15 | 2022-12-22 |  | 62010299 | 16h | 4h |
| 43 | 8.2.2 | พัฒนา API Request All Prediction Handler | manual | 8d | 2022-12-26 | 2023-01-02 | 36, 37 |  |  | 2022-12-26 | 2023-01-02 | 8d | 2022-12-26 | 2023-01-02 |  | 62010299 | 16h |  |
| 44 | 8.2.3 | พัฒนา API Request All Outcome Predict of All Student | manual | 1d | 2023-01-03 | 2023-01-03 | 43 |  |  | 2023-01-03 | 2023-01-03 | 1d | 2023-01-03 | 2023-01-03 |  | 62010299 | 2h |  |
| 45 | 8.2.4 | พัฒนา API Calculate overall (old) Outcome | manual | 4d | 2022-12-31 | 2023-01-03 |  |  |  | 2022-12-31 | 2023-01-03 | 4d | 2022-12-31 | 2023-01-03 |  | 62010299 | 8h |  |
| 46 | 8.2.5 | พัฒนา API Request Elective Subject | manual | 4d | 2023-01-05 | 2023-01-08 | 36, 37 |  |  | 2023-01-05 | 2023-01-08 | 4d | 2023-01-05 | 2023-01-08 |  | 62010299 | 8h |  |
| 47 | 8.2.6 | พัฒนา API Add Update Edit | manual | 5d | 2023-01-08 | 2023-01-12 |  |  |  | 2023-01-08 | 2023-01-12 | 5d | 2023-01-08 | 2023-01-12 |  | 62010299 | 10h |  |
| 48 | 8.2.7 | พัฒนา API Login Handler | manual | 4d | 2023-01-12 | 2023-01-15 |  |  |  | 2023-01-12 | 2023-01-15 | 4d | 2023-01-12 | 2023-01-15 |  | 62010299 | 8h |  |
| 49 | 8.3 | **พัฒนา Frontend** |  | 20d | 2023-01-19 | 2023-02-07 |  |  |  |  |  |  |  |  | 0d | 62010299 | 70h |  |
| 50 | 8.3.1 | พัฒนาหน้าการใช้งานสำหรับบุคคทั่วไป | manual | 5d | 2023-01-19 | 2023-01-23 |  |  |  | 2023-01-19 | 2023-01-23 | 5d | 2023-01-19 | 2023-01-23 |  | 62010299 | 10h |  |
| 51 | 8.3.2 | พัฒนาหน้าการใช้งานสำหรับนักศึกษา | manual | 5d | 2023-01-27 | 2023-01-31 |  |  |  | 2023-01-27 | 2023-01-31 | 5d | 2023-01-27 | 2023-01-31 |  | 62010299 | 10h |  |
| 52 | 8.3.3 | พัฒนาหน้าการใช้งานสำหรับกรรมการหลักสูตร | manual | 5d | 2023-02-03 | 2023-02-07 |  |  |  | 2023-02-03 | 2023-02-07 | 5d | 2023-02-03 | 2023-02-07 |  | 62010299 | 10h |  |

| ID | WBS | Task | Type | Duration | Start | Finish | Predecessors | Baseline start | Baseline finish | Baseline duration | Baseline 1 start | Baseline 1 finish | Total slack | Resources | Work |
| --- | --- | --- | --- | --- | --- | --- | --- | --- | --- | --- | --- | --- | --- | --- | --- |
| 53 | 8.4 | **ทดสอบการทำงานร่วมกัน** |  | 13d | 2023-02-08 | 2023-02-20 |  |  |  |  |  |  | 0d | 62010299; 62010465 | 64h |
| 54 | 8.4.1 | ทดสอบการทำงาน Backend กับ Model | manual | 2d | 2023-02-08 | 2023-02-09 |  | 2023-02-08 | 2023-02-09 | 2d | 2023-02-08 | 2023-02-09 |  | 62010465 | 4h |
| 55 | 8.4.2 | ทดสอบการทำงาน Frontend กับ Backend | manual | 2d | 2023-02-14 | 2023-02-15 |  | 2023-02-14 | 2023-02-15 | 2d | 2023-02-14 | 2023-02-15 |  | 62010299 | 4h |
| 56 | 8.4.3 | ทดสอบการทำงานทั้งหมด | manual | 1d | 2023-02-20 | 2023-02-20 | 54, 55 | 2023-02-20 | 2023-02-20 | 1d | 2023-02-20 | 2023-02-20 |  | 62010299; 62010465 | 4h |
| 57 | 8.5 | **Deploy Production** |  | 23d | 2023-02-21 | 2023-03-15 |  |  |  |  |  |  | 0d | 62010299; 62010465 | 168h |
| 58 | 8.5.1 | Deploy Django | manual | 5d | 2023-02-21 | 2023-02-25 |  | 2023-02-21 | 2023-02-25 | 5d | 2023-02-21 | 2023-02-25 |  | 62010465 | 10h |
| 59 | 8.5.2 | Deploy React | manual | 5d | 2023-02-21 | 2023-02-25 |  | 2023-02-21 | 2023-02-25 | 5d | 2023-02-21 | 2023-02-25 |  | 62010465 | 10h |
| 60 | 8.5.3 | ทดสอบการทำงาน Backend กับ Model (Deploy) | manual | 4d | 2023-02-26 | 2023-03-01 | 58 | 2023-02-26 | 2023-03-01 | 4d | 2023-02-26 | 2023-03-01 |  | 62010465 | 8h |
| 61 | 8.5.4 | ทดสอบการทำงาน Frontend กับ Backend (Deploy) | manual | 4d | 2023-02-26 | 2023-03-01 | 58, 59 | 2023-02-26 | 2023-03-01 | 4d | 2023-02-26 | 2023-03-01 |  | 62010299 | 8h |
| 62 | 8.5.5 | ทดสอบการทำงานทั้งหมด | manual | 2d | 2023-03-02 | 2023-03-03 | 60, 61 | 2023-03-02 | 2023-03-03 | 2d | 2023-03-02 | 2023-03-03 |  | 62010299; 62010465 | 8h |
| 63 | 8.5.6 | พัฒนาระบบ CI/CD | manual | 8d | 2023-03-08 | 2023-03-15 | 62 | 2023-03-08 | 2023-03-10 | 3d | 2023-03-08 | 2023-03-10 |  | 62010299; 62010465 | 32h |
| 64 | 9 | **สรุปผลทำ ปริญญานิพนธ์** |  | 128d | 2022-11-24 | 2023-03-31 |  |  |  |  |  |  |  | 62010299; 62010465 | 628h |
| 65 | 9.1 | รายงานสำหรับ Project 1 | manual | 12d | 2022-11-24 | 2022-12-05 |  | 2022-11-24 | 2022-12-05 | 12d | 2022-11-24 | 2022-12-05 |  | 62010299; 62010465 | 48h |
| 66 | 9.2 | รายงานสำหรับ Project 2 | manual | 8d | 2023-03-08 | 2023-03-15 |  | 2023-03-08 | 2023-03-15 | 8d | 2023-03-08 | 2023-03-15 |  | 62010299; 62010465 | 32h |
| 67 | 9.3 | รวมรายงาน | manual | 9d | 2023-03-15 | 2023-03-23 |  | 2023-03-15 | 2023-03-23 | 9d | 2023-03-15 | 2023-03-23 |  | 62010299; 62010465 | 36h |
